# Don Funk Music Video 2M

Schedule from MS Project, 2016-01-04 to 2016-06-15.
P8 LLC

## Calendars

- Standard: Mon-Fri 08:00-12:00, 13:00-17:00; Sat-Sun off. Exceptions (off unless hours are given): 2016-01-18 to 2018-01-15 (Martin Luther King Jr. Day, recurring), 2016-05-30 to 2018-05-28 (Memorial Day, recurring).

## Schedule

| ID | WBS | Task | Type | Duration | Start | Finish | Predecessors | Total slack |
| --- | --- | --- | --- | --- | --- | --- | --- | --- |
| 1 | 1 | **Pre-Production** |  | 95d | 2016-01-04 | 2016-05-16 |  | 0d |
| 2 | 1.1 | Pre-Production begins | milestone | 0d | 2016-01-04 | 2016-01-04 |  | 0d |
| 3 | 1.2 | Review screenplay |  | 3w | 2016-01-04 | 2016-01-25 | 2 | 0d |
| 4 | 1.3 | Develop scene blocking and schedule |  | 1w | 2016-01-26 | 2016-02-01 | 3 | 0d |
| 5 | 1.4 | Develop production layouts |  | 1mo | 2016-02-02 | 2016-02-29 | 4 | 0d |
| 6 | 1.5 | Identify and reserve locations |  | 5w | 2016-03-01 | 2016-04-04 | 5 | 0d |
| 7 | 1.6 | Book musicians |  | 2w | 2016-04-05 | 2016-04-18 | 6 | 0d |
| 8 | 1.7 | Book dancers |  | 2w | 2016-04-19 | 2016-05-02 | 7 | 0d |
| 9 | 1.8 | Reserve audio recording equipment |  | 1w | 2016-05-03 | 2016-05-09 | 8 | 0d |
| 10 | 1.9 | Reserve video recording equipment |  | 5d | 2016-05-10 | 2016-05-16 | 9 | 0d |
| 11 | 1.10 | Pre-Production complete | milestone | 0d | 2016-05-16 | 2016-05-16 | 10 | 0d |
| 12 | 2 | **Production** |  | 20.25d | 2016-05-16 | 2016-06-15 |  | 0d |
| 13 | 2.1 | Production begins | milestone | 0d | 2016-05-16 | 2016-05-16 | 11 | 0d |
| 14 | 2.2 | **Scene 1** |  | 6.75d | 2016-05-16 | 2016-05-25 |  | 0d |
| 15 | 2.2.1 | Scene 1 begin | milestone | 0d | 2016-05-16 | 2016-05-16 | 13 | 0d |
| 16 | 2.2.2 | Scene 1 setup |  | 2d | 2016-05-17 | 2016-05-18 | 15 | 0d |
| 17 | 2.2.3 | Scene 1 rehearsal |  | 6h | 2016-05-19 | 2016-05-19 | 16 | 0d |
| 18 | 2.2.4 | Scene 1 vocal recording |  | 1d | 2016-05-19 | 2016-05-20 | 17 | 0d |
| 19 | 2.2.5 | Scene 1 video shoot |  | 2d | 2016-05-20 | 2016-05-24 | 18 | 0d |
| 20 | 2.2.6 | Scene 1 teardown |  | 1d | 2016-05-24 | 2016-05-25 | 19 | 0d |
| 21 | 2.2.7 | Scene 1 complete | milestone | 0d | 2016-05-25 | 2016-05-25 | 20 | 0d |
| 22 | 2.3 | **Scene 2** |  | 6.75d | 2016-05-25 | 2016-06-06 |  | 0d |
| 23 | 2.3.1 | Scene 2 begin | milestone | 0d | 2016-05-25 | 2016-05-25 | 21 | 0d |
| 24 | 2.3.2 | Scene 2 setup |  | 2d | 2016-05-25 | 2016-05-27 | 23 | 0d |
| 25 | 2.3.3 | Scene 2 rehearsal |  | 6h | 2016-05-27 | 2016-05-31 | 24 | 0d |
| 26 | 2.3.4 | Scene 2 vocal recording |  | 1d | 2016-05-31 | 2016-06-01 | 25 | 0d |
| 27 | 2.3.5 | Scene 2 video shoot |  | 2d | 2016-06-01 | 2016-06-03 | 26 | 0d |
| 28 | 2.3.6 | Scene 2 teardown |  | 1d | 2016-06-03 | 2016-06-06 | 27 | 0d |
| 29 | 2.3.7 | Scene 2 complete | milestone | 0d | 2016-06-06 | 2016-06-06 | 28 | 0d |

Notes:
- 7: Call Andy Teal for the mandolin

| ID | WBS | Task | Type | Duration | Start | Finish | Predecessors | Total slack |
| --- | --- | --- | --- | --- | --- | --- | --- | --- |
| 30 | 2.4 | **Scene 3** |  | 6.75d | 2016-06-06 | 2016-06-15 |  | 0d |
| 31 | 2.4.1 | Scene 3 begin | milestone | 0d | 2016-06-06 | 2016-06-06 | 29 | 0d |
| 32 | 2.4.2 | Scene 3 setup |  | 2d | 2016-06-06 | 2016-06-08 | 31 | 0d |
| 33 | 2.4.3 | Scene 3 rehearsal |  | 6h | 2016-06-08 | 2016-06-09 | 32 | 0d |
| 34 | 2.4.4 | Scene 3 vocal recording |  | 1d | 2016-06-09 | 2016-06-10 | 33 | 0d |
| 35 | 2.4.5 | Scene 3 video shoot |  | 2d | 2016-06-10 | 2016-06-14 | 34 | 0d |
| 36 | 2.4.6 | Scene 3 teardown |  | 1d | 2016-06-14 | 2016-06-15 | 35 | 0d |
| 37 | 2.4.7 | Scene 3 complete | milestone | 0d | 2016-06-15 | 2016-06-15 | 36 | 0d |
| 38 | 2.5 | Production complete | milestone | 0d | 2016-06-15 | 2016-06-15 | 37 | 0d |
| 39 | 3 | **Post-Production** |  | 115.25d | 2016-01-04 | 2016-06-15 |  | 0d |
| 40 | 3.1 | Post-Production Begins | milestone | 0d | 2016-06-15 | 2016-06-15 | 38 | 0d |
| 41 | 3.2 | Post-Production complete | milestone | 0d | 2016-01-04 | 2016-01-04 |  | 115.25d |
